Schedule from MS Project, 2024-03-14 to 2024-09-12, 5 hours a day, costs in ₹.
HP

## Calendars

- Standard: Mon-Fri 08:00-12:00, 13:00-17:00; Sat-Sun off. Exceptions (off unless hours are given): 2024-01-01 to 2025-01-01 (11th Feb, recurring), 2024-04-01 to 2025-04-01 08:00-12:00, 13:00-17:00 (3rd Sat, recurring), 2024-04-01 to 2025-04-01 08:00-12:00, 13:00-17:00 (Last Sat, recurring).

## Resources

| Resource | Rate | Cost per use |
| --- | --- | --- |
| Project Manager | 120 |  |
| Analyst | 100 |  |
| UI designer | 100 |  |
| Software engineer | 100 |  |
| Data base designer | 100 |  |
| Front end developer | 100 |  |
| full stack develops | 100 |  |
| Testing engineer | 100 |  |
| Deployment team | 100 |  |
| Cloud storage | 100000 |  |
| Electricity | 10 | 100 |
| Dev tools | 5000 |  |
| Testing tools | 5000 |  |
| Travelling cost |  |  |
| Computers | 5000 |  |
| Adminstration | 120 |  |
| System Architect |  |  |

## Schedule

| ID | WBS | Task | Duration | Start | Finish | Predecessors | Baseline start | Baseline finish | Baseline duration | Total slack | Free slack | Constraint | Deadline | Resources | Work | Cost | Baseline cost |
| --- | --- | --- | --- | --- | --- | --- | --- | --- | --- | --- | --- | --- | --- | --- | --- | --- | --- |
| 1 | 1 | **UMS** | 224.53d | 2024-03-14 | 2024-09-12 |  | 2024-03-14 | 2024-08-09 | 169.87d | 0d |  |  |  |  | 1438.4h | 251,141.33 | 254,213.33 |
| 2 | 1.1 | **Planning for ums** | 86.4d | 2024-03-14 | 2024-05-24 |  | 2024-03-14 | 2024-04-10 | 31.73d | 0d |  |  |  |  | 109.07h | 128,088 | 131,160 |
| 3 | 1.1.1 | Define scope of the ums | 4.8d | 2024-03-14 | 2024-03-19 |  | 2024-03-14 | 2024-03-19 | 4.8d | 53.07d | 0d |  | 2024-05-09 | Project Manager | 24h | 2,880 | 2,880 |
| 4 | 1.1.2 | Define objective of the ums | 7.73d | 2024-03-19 | 2024-03-25 | 3 | 2024-03-19 | 2024-03-25 | 7.73d | 53.07d |  |  |  | Project Manager | 38.67h | 4,640 | 4,640 |
| 5 | 1.1.3 | Define the stakeholder in college | 6.4d | 2024-05-09 | 2024-05-15 | 4FS+1.6d | 2024-03-25 | 2024-03-29 | 6.4d | 0d |  | start no earlier than 2024-05-09 |  | Project Manager [20%] | 6.4h | 768 | 3,840 |
| 6 | 1.1.4 | Buying Infrastructure required | 4.8d | 2024-05-15 | 2024-05-18 | 5 | 2024-03-29 | 2024-04-03 | 4.8d | 0d |  |  |  | Cloud storage; Computers; Dev tools; Testing tools |  | 115,000 | 115,000 |
| 7 | 1.1.5 | Design the schedule of the plan | 4.8d | 2024-05-18 | 2024-05-22 | 6 | 2024-04-03 | 2024-04-08 | 4.8d | 0d |  |  |  | Project Manager | 24h | 2,880 | 2,880 |
| 8 | 1.1.6 | Review the plan | 3.2d | 2024-05-22 | 2024-05-24 | 7 | 2024-04-08 | 2024-04-10 | 3.2d | 0d |  |  |  | Project Manager | 16h | 1,920 | 1,920 |
| 9 | 1.2 | **Requirement Phase of ums** | 36.27d | 2024-05-24 | 2024-06-21 |  | 2024-04-10 | 2024-05-13 | 36.27d | 0d |  |  |  |  | 237.33h | 24,053.33 | 24,053.33 |
| 10 | 1.2.1 | gather the requirements from the stakeholders | 9.6d | 2024-05-24 | 2024-05-31 | 8 | 2024-04-10 | 2024-04-18 | 9.6d | 0d |  |  |  | Analyst | 48h | 4,800 | 4,800 |
| 11 | 1.2.2 | Gather the requirements from the end users | 8d | 2024-05-24 | 2024-05-30 | 8 | 2024-04-10 | 2024-04-17 | 8d | 1.6d |  |  |  | Analyst | 40h | 4,000 | 4,000 |
| 12 | 1.2.3 | Study all existing student interface | 6.4d | 2024-05-31 | 2024-06-06 | 10, 11 | 2024-04-18 | 2024-04-24 | 6.4d | 0d |  |  |  | Analyst | 32h | 3,200 | 3,200 |
| 13 | 1.2.4 | Perform analysis on given requirements | 9.33d | 2024-06-06 | 2024-06-13 | 12 | 2024-04-24 | 2024-05-02 | 9.33d | 0d |  |  |  | Analyst | 46.67h | 4,666.67 | 4,666.67 |
| 14 | 1.2.5 | Remove ERRORS | 1.33d | 2024-06-13 | 2024-06-14 | 13 | 2024-05-02 | 2024-05-03 | 1.33d | 0d |  |  |  | Analyst | 6.67h | 666.67 | 666.67 |
| 15 | 1.2.6 | Design SRS document | 6.4d | 2024-06-14 | 2024-06-19 | 14 | 2024-05-03 | 2024-05-09 | 6.4d | 0d |  |  |  | Analyst | 32h | 3,200 | 3,200 |
| 16 | 1.2.7 | Review SRS | 3.2d | 2024-06-19 | 2024-06-21 | 15 | 2024-05-09 | 2024-05-13 | 3.2d | 0d |  |  |  | Analyst; Adminstration | 32h | 3,520 | 3,520 |
| 17 | 1.3 | **Design Phase** | 55.47d | 2024-06-21 | 2024-08-06 |  | 2024-05-13 | 2024-07-01 | 55.47d | 0d |  |  |  |  | 569.33h | 41,733.33 | 41,733.33 |
| 18 | 1.3.1 | **Design UI ums** | 38.67d | 2024-06-21 | 2024-07-23 |  | 2024-05-13 | 2024-06-14 | 38.67d | 0d |  |  |  |  | 257.33h | 25,733.33 | 25,733.33 |
| 19 | 1.3.1.1 | Design Interface for Main page (Dashboard) | 8d | 2024-06-21 | 2024-06-28 | 16 | 2024-05-13 | 2024-05-20 | 8d | 0d |  |  |  | UI designer | 40h | 4,000 | 4,000 |
| 20 | 1.3.1.2 | Design Payment portal | 8d | 2024-06-28 | 2024-07-04 | 19 | 2024-05-20 | 2024-05-27 | 8d | 1.6d | 0d |  |  | UI designer | 40h | 4,000 | 4,000 |
| 21 | 1.3.1.3 | Design Student interface | 9.6d | 2024-06-28 | 2024-07-05 | 19 | 2024-05-20 | 2024-05-28 | 9.6d | 0d |  |  |  | UI designer | 48h | 4,800 | 4,800 |
| 22 | 1.3.1.4 | Design Student list along with search interface | 9.6d | 2024-07-05 | 2024-07-15 | 21, 20 | 2024-05-28 | 2024-06-05 | 9.6d | 0d |  |  |  | UI designer | 48h | 4,800 | 4,800 |
| 23 | 1.3.1.5 | Design event reccomendation interface | 5.07d | 2024-07-15 | 2024-07-18 | 22 | 2024-06-05 | 2024-06-10 | 5.07d | 0d |  |  |  | UI designer | 25.33h | 2,533.33 | 2,533.33 |
| 24 | 1.3.1.6 | Design user registration page | 6.4d | 2024-07-18 | 2024-07-23 | 23 | 2024-06-10 | 2024-06-14 | 6.4d | 0d |  |  |  | UI designer | 32h | 3,200 | 3,200 |
| 25 | 1.3.1.7 | Design login page | 4.8d | 2024-07-18 | 2024-07-22 | 23 | 2024-06-10 | 2024-06-13 | 4.8d | 1.6d |  |  |  | UI designer | 24h | 2,400 | 2,400 |

| ID | WBS | Task | Duration | Start | Finish | Predecessors | Baseline start | Baseline finish | Baseline duration | Total slack | Free slack | Resources | Work | Cost | Baseline cost |
| --- | --- | --- | --- | --- | --- | --- | --- | --- | --- | --- | --- | --- | --- | --- | --- |
| 26 | 1.3.2 | **Design Algo for ums** | 17.6d | 2024-07-04 | 2024-07-19 |  | 2024-05-27 | 2024-06-11 | 17.6d | 9.07d |  |  | 112h |  |  |
| 27 | 1.3.2.1 | Design algo for search requirements | 6.4d | 2024-07-15 | 2024-07-19 | 22 | 2024-06-05 | 2024-06-11 | 6.4d | 3.73d | 0d | System Architect | 32h |  |  |
| 28 | 1.3.2.2 | Design Algo student performance system | 6.4d | 2024-07-15 | 2024-07-19 | 22 | 2024-06-05 | 2024-06-11 | 6.4d | 9.07d | 0d | System Architect | 32h |  |  |
| 29 | 1.3.2.3 | Design Algo for Registration page | 9.6d | 2024-07-04 | 2024-07-12 | 20 | 2024-05-27 | 2024-06-04 | 9.6d | 10.4d | 0d | System Architect | 48h |  |  |
| 30 | 1.3.3 | **Design DB for ums** | 17.07d | 2024-07-15 | 2024-07-27 |  | 2024-06-05 | 2024-06-20 | 17.07d | 0d |  |  | 104h | 10,400 | 10,400 |
| 31 | 1.3.3.1 | Design DB tables for list of Linkages | 6.93d | 2024-07-19 | 2024-07-25 | 27 | 2024-06-11 | 2024-06-17 | 6.93d | 3.73d | 0d | Data base designer | 34.67h | 3,466.67 | 3,466.67 |
| 32 | 1.3.3.2 | Design DB tables for list of Users | 5.6d | 2024-07-23 | 2024-07-27 | 24, 25 | 2024-06-14 | 2024-06-20 | 5.6d | 0d |  | Data base designer | 28h | 2,800 | 2,800 |
| 33 | 1.3.3.3 | Design DB tables for marks of student | 8.27d | 2024-07-15 | 2024-07-20 | 22, 29 | 2024-06-05 | 2024-06-12 | 8.27d | 8.8d | 0d | Data base designer | 41.33h | 4,133.33 | 4,133.33 |
| 34 | 1.3.4 | **Design documation for ums** | 21.87d | 2024-07-19 | 2024-08-06 |  | 2024-06-11 | 2024-07-01 | 21.87d | 0d |  |  | 96h | 5,600 | 5,600 |
| 35 | 1.3.4.1 | Create ER diagrams | 6.4d | 2024-07-27 | 2024-08-01 | 31, 32, 33 | 2024-06-20 | 2024-06-26 | 6.4d | 0d |  | Data base designer | 32h | 3,200 | 3,200 |
| 36 | 1.3.4.2 | Create Data flow diagrams | 8d | 2024-07-19 | 2024-07-25 | 27, 28, 29 | 2024-06-11 | 2024-06-18 | 8d | 9.07d |  | System Architect | 40h |  |  |
| 37 | 1.3.4.3 | Create Use case digrams | 4.8d | 2024-08-01 | 2024-08-06 | 35, 36 | 2024-06-26 | 2024-07-01 | 4.8d | 0d |  | Software engineer | 24h | 2,400 | 2,400 |
| 38 | 1.4 | **Implemation Phase** | 58.13d | 2024-06-28 | 2024-08-15 |  | 2024-05-20 | 2024-07-09 | 58.13d | 0d |  |  | 357.33h | 35,733.33 | 35,733.33 |
| 39 | 1.4.1 | **Code user interface of ums** | 42.4d | 2024-06-28 | 2024-08-01 |  | 2024-05-20 | 2024-06-26 | 42.4d | 5.07d |  |  | 144h | 14,400 | 14,400 |
| 40 | 1.4.1.1 | code UI for Dashboard and performance | 5.33d | 2024-06-28 | 2024-07-03 | 19 | 2024-05-20 | 2024-05-23 | 5.33d | 30.4d | 25.33d | Front end developer | 26.67h | 2,666.67 | 2,666.67 |
| 41 | 1.4.1.2 | code UI for Student payment for exams | 5.33d | 2024-07-04 | 2024-07-10 | 20 | 2024-05-27 | 2024-05-30 | 5.33d | 34.13d |  | Front end developer | 26.67h | 2,666.67 | 2,666.67 |
| 42 | 1.4.1.3 | Code UI for student performance | 1.07d | 2024-07-05 | 2024-07-08 | 21 | 2024-05-28 | 2024-05-29 | 1.07d | 36.8d |  | Front end developer | 5.33h | 533.33 | 533.33 |
| 43 | 1.4.1.4 | Code UI for Anuncement of college | 5.33d | 2024-07-18 | 2024-07-23 | 22, 23 | 2024-06-10 | 2024-06-14 | 5.33d | 17.87d |  | Front end developer | 26.67h | 2,666.67 | 2,666.67 |
| 44 | 1.4.1.5 | Code UI for Registration event page | 6.4d | 2024-07-23 | 2024-07-27 | 24, 40 | 2024-06-14 | 2024-06-20 | 6.4d | 5.07d | 0d | Front end developer | 32h | 3,200 | 3,200 |
| 45 | 1.4.1.6 | Code UI for Login page | 5.33d | 2024-07-27 | 2024-08-01 | 25, 44 | 2024-06-20 | 2024-06-26 | 5.33d | 5.07d |  | Front end developer | 26.67h | 2,666.67 | 2,666.67 |
| 46 | 1.4.2 | **Code algo for ums** | 13.33d | 2024-07-12 | 2024-07-24 |  | 2024-06-04 | 2024-06-14 | 13.33d | 16.53d |  |  | 74.67h | 7,466.67 | 7,466.67 |
| 47 | 1.4.2.1 | Code algo for search | 5.33d | 2024-07-19 | 2024-07-24 | 27 | 2024-06-11 | 2024-06-14 | 5.33d | 16.53d |  | full stack develops | 26.67h | 2,666.67 | 2,666.67 |
| 48 | 1.4.2.2 | Code algo for anouncements of college | 4.27d | 2024-07-19 | 2024-07-23 | 28 | 2024-06-11 | 2024-06-14 | 4.27d | 17.6d |  | full stack develops | 21.33h | 2,133.33 | 2,133.33 |
| 49 | 1.4.2.3 | Code algo for data encriptions | 5.33d | 2024-07-12 | 2024-07-18 | 29 | 2024-06-04 | 2024-06-07 | 5.33d | 24.53d |  | full stack develops | 26.67h | 2,666.67 | 2,666.67 |

| ID | WBS | Task | Duration | Start | Finish | Predecessors | Baseline start | Baseline finish | Baseline duration | Total slack | Resources | Work | Cost | Baseline cost |
| --- | --- | --- | --- | --- | --- | --- | --- | --- | --- | --- | --- | --- | --- | --- |
| 50 | 1.4.3 | **Code Database for ums** | 13.33d | 2024-07-22 | 2024-07-31 |  | 2024-06-14 | 2024-06-25 | 11.73d | 5.87d |  | 85.33h | 8,533.33 | 8,533.33 |
| 51 | 1.4.3.1 | DB tables for students with student CGPA | 6.4d | 2024-07-25 | 2024-07-30 | 31 | 2024-06-17 | 2024-06-21 | 6.4d | 8.53d | full stack develops | 32h | 3,200 | 3,200 |
| 52 | 1.4.3.2 | DB table for student and user registration | 5.33d | 2024-07-27 | 2024-07-31 | 32 | 2024-06-20 | 2024-06-25 | 5.33d | 5.87d | full stack develops | 26.67h | 2,666.67 | 2,666.67 |
| 53 | 1.4.3.3 | DB tables for placed students | 5.33d | 2024-07-22 | 2024-07-25 | 33 | 2024-06-14 | 2024-06-19 | 5.33d | 13.87d | full stack develops | 26.67h | 2,666.67 | 2,666.67 |
| 54 | 1.4.4 | CODE REVIEW | 10.67d | 2024-08-06 | 2024-08-15 | 40, 41, 42, 45, 47, 48, 49, 51, 52, 53, 37, 43 | 2024-07-01 | 2024-07-09 | 10.67d | 0d | Software engineer | 53.33h | 5,333.33 | 5,333.33 |
| 55 | 1.5 | **Testing Phase of ums** | 19.2d | 2024-08-15 | 2024-08-30 |  | 2024-07-09 | 2024-07-25 | 19.2d | 0d |  | 96h | 9,600 | 9,600 |
| 56 | 1.5.1 | Integration testing | 4.27d | 2024-08-15 | 2024-08-17 | 54 | 2024-07-09 | 2024-07-12 | 4.27d | 0d | Testing engineer | 21.33h | 2,133.33 | 2,133.33 |
| 57 | 1.5.2 | System testing | 5.33d | 2024-08-17 | 2024-08-22 | 56 | 2024-07-12 | 2024-07-17 | 5.33d | 0d | Testing engineer | 26.67h | 2,666.67 | 2,666.67 |
| 58 | 1.5.3 | acceptance testing | 6.4d | 2024-08-22 | 2024-08-28 | 57 | 2024-07-17 | 2024-07-23 | 6.4d | 0d | Testing engineer | 32h | 3,200 | 3,200 |
| 59 | 1.5.4 | performance testing ums | 3.2d | 2024-08-28 | 2024-08-30 | 58 | 2024-07-23 | 2024-07-25 | 3.2d | 0d | Testing engineer | 16h | 1,600 | 1,600 |
| 60 | 1.6 | **Deployment phase ums** | 16.53d | 2024-08-30 | 2024-09-12 |  | 2024-07-25 | 2024-08-09 | 16.53d | 0d |  | 69.33h | 11,933.33 | 11,933.33 |
| 61 | 1.6.1 | Software beta version of UMS | 4.27d | 2024-08-30 | 2024-09-02 | 59 | 2024-07-25 | 2024-07-30 | 4.27d | 0d | Deployment team | 21.33h | 2,133.33 | 2,133.33 |
| 62 | 1.6.2 | review beta ver ums | 5.33d | 2024-09-02 | 2024-09-09 | 61 | 2024-07-30 | 2024-08-06 | 5.33d | 0d | Deployment team; Travelling cost [1.2%] | 26.67h | 7,666.67 | 7,666.67 |
| 63 | 1.6.3 | update for final release of ums | 4.27d | 2024-09-09 | 2024-09-12 | 62 | 2024-08-06 | 2024-08-09 | 4.27d | 0d | Deployment team | 21.33h | 2,133.33 | 2,133.33 |
