# E-Commerce Website

Schedule from MS Project, 2023-02-01 to 2023-04-04, 5 hours a day, costs in ₹, A marks actual dates.

## Calendars

- Souvik1: Mon-Fri 08:00-12:00, 13:00-17:00; Sat 09:00-10:00; Sun off. Exceptions (off unless hours are given): 2023-02-01 to 2024-02-02 (3rd Sat, recurring), 2023-02-01 to 2024-02-02 (4th Sat, recurring), 2023-02-02 to 2024-02-02 (recurring).

## Resources

| Resource | Rate |
| --- | --- |
| Project Manager | 200 |
| Cloud Storage | 10000 |
| Printer | 5000 |
| DevTools | 20000 |
| Computers | 100000 |
| Adminstration | 150 |
| Data Analyst | 250 |
| UI/UX Designer | 200 |
| System Architect | 300 |
| Database Designer | 250 |
| Software Engineer | 250 |
| Front-end Developer | 150 |
| Full-Stack Developer | 150 |
| Database Engineer | 100 |
| Testing Team | 400 |
| Maintainence Team | 250 |
| Travelling Charges |  |

## Schedule

| ID | WBS | Task | Duration | Start | Finish | Predecessors | Complete | Remaining | Baseline start | Baseline finish | Baseline duration | Total slack | Free slack | Constraint | Resources | Work | Actual work | Cost | Baseline cost | Actual cost |
| --- | --- | --- | --- | --- | --- | --- | --- | --- | --- | --- | --- | --- | --- | --- | --- | --- | --- | --- | --- | --- |
| 1 | 1 | **Planning** | 13d | 2023-02-01 A | 2023-02-10 |  | 55% | 5.85d | 2023-02-01 | 2023-02-10 | 13d | 0d |  |  |  | 65h | 35.75h | 602,875 | 602,875 | 7,150.33 |
| 2 | 1.1 | Identify the scope of the Project | 2d | 2023-02-01 A | 2023-02-02 A |  | 100% |  | 2023-02-01 | 2023-02-02 | 2d |  |  | finish no later than 2023-02-03 | Project Manager | 10h | 10h | 2,000 | 2,000 | 2,000 |
| 3 | 1.2 | Identify Objective of the Project | 3d | 2023-02-02 A | 2023-02-04 A | 2 | 100% |  | 2023-02-02 | 2023-02-04 | 3d |  |  |  | Project Manager | 15h | 15h | 3,000 | 3,000 | 3,000 |
| 4 | 1.3 | Identify the Stakeholders | 3d | 2023-02-06 A | 2023-02-07 | 3 | 72% | 0.85d | 2023-02-06 | 2023-02-07 | 3d | 0d |  |  | Project Manager | 15h | 10.75h | 3,000 | 3,000 | 2,150.33 |
| 5 | 1.4 | Buying Infrastrucure Required | 3d | 2023-02-07 | 2023-02-09 | 4 |  |  | 2023-02-07 | 2023-02-09 | 3d | 0d |  |  | Project Manager; Cloud Storage [200%]; Printer [200%]; DevTools [300%]; Computers [500%] | 15h |  | 593,000 | 593,000 |  |
| 6 | 1.5 | Plan the Schedules of the Project | 1d | 2023-02-09 | 2023-02-10 | 5 |  |  | 2023-02-09 | 2023-02-10 | 1d | 0d |  |  | Project Manager [50%]; Adminstration [50%] | 5h |  | 875 | 875 |  |
| 7 | 1.6 | Review the Plan | 1d | 2023-02-10 | 2023-02-10 | 6 |  |  | 2023-02-10 | 2023-02-10 | 1d | 0d |  |  | Project Manager | 5h |  | 1,000 | 1,000 |  |
| 8 | 2 | **Requirement Phase** | 7.4d | 2023-02-11 | 2023-02-20 |  |  |  | 2023-02-11 | 2023-02-20 | 7.4d | 0d |  |  |  | 55h |  | 13,750 | 13,750 |  |
| 9 | 2.1 | Gather requirement from the Stakeholders | 2d | 2023-02-11 | 2023-02-14 | 7 |  |  | 2023-02-11 | 2023-02-14 | 2d | 0d |  |  | Data Analyst | 10h |  | 2,500 | 2,500 |  |
| 10 | 2.2 | Gather requirements from the end-users | 2d | 2023-02-11 | 2023-02-14 | 7 |  |  | 2023-02-11 | 2023-02-14 | 2d | 0d |  |  | Data Analyst | 10h |  | 2,500 | 2,500 |  |
| 11 | 2.3 | Study all existing System | 2d | 2023-02-14 | 2023-02-15 | 9, 10 |  |  | 2023-02-14 | 2023-02-15 | 2d | 0d |  |  | Data Analyst | 10h |  | 2,500 | 2,500 |  |
| 12 | 2.4 | Remove Anomalies | 3d | 2023-02-15 | 2023-02-17 | 11 |  |  | 2023-02-15 | 2023-02-17 | 3d | 0d |  |  | Data Analyst | 15h |  | 3,750 | 3,750 |  |
| 13 | 2.5 | Create SRS/ SRS Documentation | 1d | 2023-02-17 | 2023-02-17 | 12 |  |  | 2023-02-17 | 2023-02-17 | 1d | 0d |  |  | Data Analyst | 5h |  | 1,250 | 1,250 |  |
| 14 | 2.6 | Review / Refine SRS | 1d | 2023-02-17 | 2023-02-20 | 13 |  |  | 2023-02-17 | 2023-02-20 | 1d | 0d |  |  | Data Analyst | 5h |  | 1,250 | 1,250 |  |
| 15 | 3 | **Design Phase** | 31d | 2023-02-20 | 2023-03-17 |  |  |  | 2023-02-20 | 2023-03-17 | 31d | 0d |  |  |  | 215h |  | 51,500 | 51,500 |  |
| 16 | 3.1 | **Design UI for Flipkart** | 14d | 2023-02-20 | 2023-03-03 |  |  |  | 2023-02-20 | 2023-03-03 | 14d | 0d |  |  |  | 105h |  | 21,000 | 21,000 |  |
| 17 | 3.1.1 | Design Dashboard for Flipkart | 4d | 2023-02-20 | 2023-02-22 | 14 |  |  | 2023-02-20 | 2023-02-22 | 4d | 0d |  |  | UI/UX Designer | 20h |  | 4,000 | 4,000 |  |
| 18 | 3.1.2 | Design Payment Interface | 4d | 2023-02-20 | 2023-02-22 | 14 |  |  | 2023-02-20 | 2023-02-22 | 4d | 0d |  |  | UI/UX Designer | 20h |  | 4,000 | 4,000 |  |
| 19 | 3.1.3 | Design Cart UI | 3d | 2023-02-23 | 2023-02-24 | 17, 18 |  |  | 2023-02-23 | 2023-02-24 | 3d | 0d |  |  | UI/UX Designer | 15h |  | 3,000 | 3,000 |  |
| 20 | 3.1.4 | Design Product recommendation System with search Interface | 3d | 2023-02-24 | 2023-02-28 | 19 |  |  | 2023-02-24 | 2023-02-28 | 3d | 0d |  |  | UI/UX Designer | 15h |  | 3,000 | 3,000 |  |
| 21 | 3.1.5 | Design User registration Page | 3d | 2023-02-28 | 2023-03-02 | 20 |  |  | 2023-02-28 | 2023-03-02 | 3d | 4d | 1d |  | UI/UX Designer | 15h |  | 3,000 | 3,000 |  |
| 22 | 3.1.6 | Design Login Page | 4d | 2023-02-28 | 2023-03-03 | 20 |  |  | 2023-02-28 | 2023-03-03 | 4d | 0d |  |  | UI/UX Designer | 20h |  | 4,000 | 4,000 |  |
| 23 | 3.2 | **Design Algo** | 10d | 2023-03-03 | 2023-03-13 |  |  |  | 2023-03-03 | 2023-03-13 | 10d | 0d |  |  |  | 50h |  | 15,000 | 15,000 |  |
| 24 | 3.2.1 | Design Algo for Payment Interface | 3d | 2023-03-03 | 2023-03-06 | 22 |  |  | 2023-03-03 | 2023-03-06 | 3d | 0d |  |  | System Architect | 15h |  | 4,500 | 4,500 |  |
| 25 | 3.2.2 | Design Algo for product recommendation System | 3d | 2023-03-07 | 2023-03-08 | 24 |  |  | 2023-03-07 | 2023-03-08 | 3d | 0d |  |  | System Architect | 15h |  | 4,500 | 4,500 |  |
| 26 | 3.2.3 | Design algo Product list | 4d | 2023-03-08 | 2023-03-13 | 25 |  |  | 2023-03-08 | 2023-03-13 | 4d | 0d |  |  | System Architect | 20h |  | 6,000 | 6,000 |  |

Notes:
- 3: obj

| ID | WBS | Task | Duration | Start | Finish | Predecessors | Baseline start | Baseline finish | Baseline duration | Total slack | Free slack | Resources | Work | Cost | Baseline cost |
| --- | --- | --- | --- | --- | --- | --- | --- | --- | --- | --- | --- | --- | --- | --- | --- |
| 27 | 3.3 | **Design DB** | 13d | 2023-03-03 | 2023-03-15 |  | 2023-03-03 | 2023-03-15 | 13d | 0d |  |  | 30h | 7,500 | 7,500 |
| 28 | 3.3.1 | Design DB for user | 3d | 2023-03-03 | 2023-03-06 | 21, 22 | 2023-03-03 | 2023-03-06 | 3d | 9d | 0d | Database Designer | 15h | 3,750 | 3,750 |
| 29 | 3.3.2 | Design DB for Product list | 3d | 2023-03-13 | 2023-03-15 | 26 | 2023-03-13 | 2023-03-15 | 3d | 0d |  | Database Designer | 15h | 3,750 | 3,750 |
| 30 | 3.4 | **Design Documentation** | 7d | 2023-03-13 | 2023-03-17 |  | 2023-03-13 | 2023-03-17 | 7d | 0d |  |  | 30h | 8,000 | 8,000 |
| 31 | 3.4.1 | Create ER Diagram | 2d | 2023-03-15 | 2023-03-16 | 28, 29 | 2023-03-15 | 2023-03-16 | 2d | 0d |  | Database Designer | 10h | 2,500 | 2,500 |
| 32 | 3.4.2 | Create Use case Diagram | 2d | 2023-03-13 | 2023-03-14 | 24, 25, 26 | 2023-03-13 | 2023-03-14 | 2d | 3d |  | System Architect | 10h | 3,000 | 3,000 |
| 33 | 3.4.3 | Create Data Flow Diagram | 2d | 2023-03-16 | 2023-03-17 | 31, 32 | 2023-03-16 | 2023-03-17 | 2d | 0d |  | Software Engineer | 10h | 2,500 | 2,500 |
| 34 | 4 | **Implementation Phase** | 20d | 2023-03-03 | 2023-03-21 |  | 2023-03-03 | 2023-03-21 | 20d | 0d |  |  | 205h | 30,000 | 30,000 |
| 35 | 4.1 | **Code UI for Flipkart** | 14d | 2023-03-03 | 2023-03-15 |  | 2023-03-03 | 2023-03-15 | 14d | 3d |  |  | 70h | 10,500 | 10,500 |
| 36 | 4.1.1 | Code UI for login and Registration | 5d | 2023-03-03 | 2023-03-08 | 21, 22 | 2023-03-03 | 2023-03-08 | 5d | 3d | 0d | Front-end Developer | 25h | 3,750 | 3,750 |
| 37 | 4.1.2 | Code UI for Cart and Payment Interface | 5d | 2023-03-08 | 2023-03-13 | 18, 19, 36 | 2023-03-08 | 2023-03-13 | 5d | 3d | 0d | Front-end Developer | 25h | 3,750 | 3,750 |
| 38 | 4.1.3 | Code UI for Product recommendation System with search interface | 4d | 2023-03-13 | 2023-03-15 | 20, 37 | 2023-03-13 | 2023-03-15 | 4d | 3d |  | Front-end Developer | 20h | 3,000 | 3,000 |
| 39 | 4.2 | **Code Algo For Flipkart** | 12d | 2023-03-07 | 2023-03-16 |  | 2023-03-07 | 2023-03-16 | 12d | 2d |  |  | 75h | 11,250 | 11,250 |
| 40 | 4.2.1 | Code algo for Product recommendation System | 5d | 2023-03-08 | 2023-03-13 | 25 | 2023-03-08 | 2023-03-13 | 5d | 6d |  | Full-Stack Developer | 25h | 3,750 | 3,750 |
| 41 | 4.2.2 | Code algo for payment Interface | 5d | 2023-03-07 | 2023-03-10 | 24 | 2023-03-07 | 2023-03-10 | 5d | 9d |  | Full-Stack Developer | 25h | 3,750 | 3,750 |
| 42 | 4.2.3 | Code algo for product list | 5d | 2023-03-13 | 2023-03-16 | 26 | 2023-03-13 | 2023-03-16 | 5d | 2d |  | Full-Stack Developer | 25h | 3,750 | 3,750 |
| 43 | 4.3 | **Code DB** | 14d | 2023-03-07 | 2023-03-17 |  | 2023-03-07 | 2023-03-17 | 14d | 0d |  |  | 45h | 4,500 | 4,500 |
| 44 | 4.3.1 | Code DB for List of Users | 5d | 2023-03-07 | 2023-03-10 | 28 | 2023-03-07 | 2023-03-10 | 5d | 9d |  | Database Engineer | 25h | 2,500 | 2,500 |
| 45 | 4.3.2 | Code DB for List of Products | 4d | 2023-03-15 | 2023-03-17 | 29 | 2023-03-15 | 2023-03-17 | 4d | 0d |  | Database Engineer | 20h | 2,000 | 2,000 |
| 46 | 4.4 | Code Review | 3d | 2023-03-17 | 2023-03-21 | 36, 37, 38, 40, 41, 42, 44, 45, 33 | 2023-03-17 | 2023-03-21 | 3d | 0d |  | Software Engineer | 15h | 3,750 | 3,750 |
| 47 | 5 | **Testing Phase** | 11d | 2023-03-21 | 2023-03-30 |  | 2023-03-21 | 2023-03-30 | 11d | 0d |  |  | 70h | 28,000 | 28,000 |
| 48 | 5.1 | System Testing | 4d | 2023-03-21 | 2023-03-23 | 46 | 2023-03-21 | 2023-03-23 | 4d | 0d |  | Testing Team | 20h | 8,000 | 8,000 |
| 49 | 5.2 | Intergration Testing | 4d | 2023-03-24 | 2023-03-28 | 48 | 2023-03-24 | 2023-03-28 | 4d | 0d |  | Testing Team | 20h | 8,000 | 8,000 |
| 50 | 5.3 | Performance Testing | 3d | 2023-03-24 | 2023-03-27 | 48 | 2023-03-24 | 2023-03-27 | 3d | 1d |  | Testing Team | 15h | 6,000 | 6,000 |
| 51 | 5.4 | acceptance Testing | 3d | 2023-03-28 | 2023-03-30 | 49, 50 | 2023-03-28 | 2023-03-30 | 3d | 0d |  | Testing Team | 15h | 6,000 | 6,000 |

| ID | WBS | Task | Duration | Start | Finish | Predecessors | Baseline start | Baseline finish | Baseline duration | Total slack | Resources | Work | Cost | Baseline cost |
| --- | --- | --- | --- | --- | --- | --- | --- | --- | --- | --- | --- | --- | --- | --- |
| 52 | 6 | **Maintainence Phase** | 6d | 2023-03-30 | 2023-04-04 |  | 2023-03-30 | 2023-04-04 | 6d | 0d |  | 30h | 7,500 | 7,500 |
| 53 | 6.1 | Release the beta Version | 3d | 2023-03-30 | 2023-04-03 | 51 | 2023-03-30 | 2023-04-03 | 3d | 0d | Maintainence Team | 15h | 3,750 | 3,750 |
| 54 | 6.2 | Re-engineering | 2d | 2023-04-03 | 2023-04-04 | 53 | 2023-04-03 | 2023-04-04 | 2d | 0d | Maintainence Team | 10h | 2,500 | 2,500 |
| 55 | 6.3 | Update for Final Release | 1d | 2023-04-04 | 2023-04-04 | 54 | 2023-04-04 | 2023-04-04 | 1d | 0d | Maintainence Team; Travelling Charges [0%] | 5h | 1,250 | 1,250 |
